# GanttChart

Schedule from MS Project, 2013-08-07 to 2013-12-09, costs in $, A marks actual dates.

## Calendars

- Standard: Mon-Fri 08:00-12:00, 13:00-17:00; Sat-Sun off. Exceptions (off unless hours are given): 2013-10-26 08:00-12:00, 13:00-17:00, 2013-12-07 to 2013-12-08 08:00-12:00, 13:00-17:00.

## Resources

| Resource | Rate |
| --- | --- |
| Nelián Colón | 26.44 |
| Samuel Rodríguez | 21.63 |
| Daniel Santiago | 21.63 |
| Nelian |  |

## Schedule

| ID | WBS | Task | Type | Duration | Start | Finish | Predecessors | Complete | Remaining | Total slack | Free slack | Constraint | Deadline | Resources | Work | Actual work | Cost | Actual cost |
| --- | --- | --- | --- | --- | --- | --- | --- | --- | --- | --- | --- | --- | --- | --- | --- | --- | --- | --- |
| 1 | 1 | **Panda Code Reviews** |  | 92d | 2013-08-07 A | 2013-12-09 |  | 38% | 57.24d | 0d |  |  | 2013-12-09 |  | 944.8h | 484.4h | 22,017.55 | 11,320.28 |
| 2 | 1.1 | **System Specification** |  | 5d | 2013-08-07 A | 2013-08-13 A |  | 100% |  |  |  |  |  |  | 120h | 120h | 2,788 | 2,788 |
| 3 | 1.1.1 | Definition of Needs |  | 1d | 2013-08-07 A | 2013-08-07 A |  | 100% |  |  |  |  |  | Daniel Santiago [50%]; Nelián Colón [50%]; Samuel Rodríguez [50%] | 24h | 24h | 557.6 | 557.6 |
| 4 | 1.1.2 | Concept Development |  | 1d | 2013-08-08 A | 2013-08-08 A | 3 | 100% |  |  |  |  |  | Daniel Santiago [50%]; Nelián Colón [50%]; Samuel Rodríguez [50%] | 24h | 24h | 557.6 | 557.6 |
| 5 | 1.1.3 | Analysis of Alternatives |  | 1d | 2013-08-09 A | 2013-08-09 A | 4 | 100% |  |  |  |  |  | Daniel Santiago [50%]; Nelián Colón [50%]; Samuel Rodríguez [50%] | 24h | 24h | 557.6 | 557.6 |
| 6 | 1.1.4 | System requirements Assessment |  | 1d | 2013-08-12 A | 2013-08-12 A | 5 | 100% |  |  |  |  |  | Daniel Santiago [50%]; Nelián Colón [50%]; Samuel Rodríguez [50%] | 24h | 24h | 557.6 | 557.6 |
| 7 | 1.1.5 | Specs Document Elaboration |  | 1d | 2013-08-13 A | 2013-08-13 A | 6 | 100% |  |  |  |  |  | Daniel Santiago [50%]; Nelián Colón [50%]; Samuel Rodríguez [50%] | 24h | 24h | 557.6 | 557.6 |
| 8 | 1.2 | **Proposal Development** |  | 13d | 2013-08-13 A | 2013-08-30 A |  | 100% |  |  |  |  | 2013-08-30 |  | 104h | 104h | 2,441.92 | 2,441.92 |
| 9 | 1.2.1 | Objectives | milestone | 0d | 2013-08-13 A | 2013-08-13 A | 7 | 100% |  |  |  |  |  | Samuel Rodríguez [50%] |  |  |  |  |
| 10 | 1.2.2 | Problem Statement |  | 1d | 2013-08-14 A | 2013-08-14 A | 9 | 100% |  |  |  |  |  | Samuel Rodríguez [50%] | 8h | 8h | 173.04 | 173.04 |
| 11 | 1.2.3 | Project Antecedents |  | 1d | 2013-08-14 A | 2013-08-14 A | 9 | 100% |  |  |  |  |  | Nelián Colón [50%] | 8h | 8h | 211.52 | 211.52 |
| 12 | 1.2.4 | General Approach |  | 1d | 2013-08-15 A | 2013-08-15 A | 11 | 100% |  |  |  |  |  | Nelián Colón [50%] | 8h | 8h | 211.52 | 211.52 |
| 13 | 1.2.5 | Personnel Workload Distribution |  | 1d | 2013-08-16 A | 2013-08-16 A | 12 | 100% |  |  |  |  |  | Nelián Colón [50%] | 8h | 8h | 211.52 | 211.52 |
| 14 | 1.2.6 | Budget |  | 1d | 2013-08-15 A | 2013-08-15 A | 10 | 100% |  |  |  |  |  | Samuel Rodríguez [50%] | 8h | 8h | 173.04 | 173.04 |
| 15 | 1.2.7 | Assessment Methods |  | 1d | 2013-08-20 A | 2013-08-20 A | 13 | 100% |  |  |  |  |  | Nelián Colón [50%] | 8h | 8h | 211.52 | 211.52 |
| 16 | 1.2.8 | Impact |  | 1d | 2013-08-14 A | 2013-08-14 A | 9 | 100% |  |  |  |  |  | Daniel Santiago [50%] | 8h | 8h | 173.04 | 173.04 |
| 17 | 1.2.9 | Market Overview |  | 1d | 2013-08-15 A | 2013-08-15 A | 11 | 100% |  |  |  |  |  | Daniel Santiago [50%] | 8h | 8h | 173.04 | 173.04 |
| 18 | 1.2.10 | Risk Management |  | 1d | 2013-08-16 A | 2013-08-16 A | 17 | 100% |  |  |  |  |  | Daniel Santiago [50%] | 8h | 8h | 173.04 | 173.04 |
| 19 | 1.2.11 | Executive Summary |  | 1d | 2013-08-21 A | 2013-08-21 A | 9, 10, 11, 12, 13, 14, 15, 16, 17, 18 | 100% |  |  |  |  |  | Samuel Rodríguez [50%] | 8h | 8h | 173.04 | 173.04 |
| 20 | 1.2.12 | First Draft Review |  | 1d | 2013-08-30 A | 2013-08-30 A | 19 | 100% |  |  |  |  |  | Daniel Santiago [50%]; Nelián Colón [50%]; Samuel Rodríguez [50%] | 24h | 24h | 557.6 | 557.6 |
| 21 | 1.3 | Final Proposal Review and Acceptance | milestone | 10d | 2013-09-02 A | 2013-09-13 A | 20 | 100% |  |  |  | finish no earlier than 2013-09-13 |  | Daniel Santiago [50%]; Nelián Colón [50%]; Samuel Rodríguez [50%] | 120h | 120h | 2,788 | 2,788 |
| 22 | 1.4 | Proposal Presentation |  | 2d | 2013-09-09 A | 2013-09-10 A | 21 | 100% |  |  |  |  |  | Daniel Santiago [50%]; Nelián Colón [50%]; Samuel Rodríguez [50%] | 48h | 48h | 1,115.2 | 1,115.2 |
| 23 | 1.5 | **System Design** |  | 13d | 2013-09-11 A | 2013-09-27 | 22 | 75% | 3.25d | 0d |  |  | 2013-09-30 |  | 108.8h | 78.4h | 2,568.83 | 1,884.34 |
| 24 | 1.5.1 | **Software Design** |  | 8d | 2013-09-11 A | 2013-09-20 | 22 | 38% | 5d | 0d |  |  | 2013-09-30 |  | 44.8h | 18.4h | 1,030.59 | 432.62 |
| 25 | 1.5.1.1 | Use Case Diagrams |  | 1d | 2013-09-11 A | 2013-09-11 A | 22 | 100% |  |  |  |  |  | Nelián Colón [50%] | 4h | 4h | 105.76 | 105.76 |
| 26 | 1.5.1.2 | Use Case Descriptions |  | 2d | 2013-09-12 A | 2013-09-13 | 25 | 80% | 0.4d | 0.2d | 0d |  |  | Nelián Colón [50%]; Daniel Santiago [50%]; Samuel Rodríguez [50%] | 16.8h | 12h | 386.47 | 274.95 |
| 27 | 1.5.1.3 | Sequential Diagram |  | 1d | 2013-09-16 | 2013-09-16 | 26 |  |  | 0.2d | 0d |  |  | Nelián Colón [50%] | 4h |  | 105.76 |  |
| 28 | 1.5.1.4 | Flow Charts |  | 2d | 2013-09-17 A | 2013-09-18 | 27 | 10% | 1.8d | 0.2d | 0d |  |  | Daniel Santiago [50%]; Samuel Rodríguez [50%] | 12h | 1.6h | 259.56 | 34.61 |
| 29 | 1.5.1.5 | Class Diagrams |  | 2d | 2013-09-19 A | 2013-09-20 | 28 | 10% | 1.8d | 0d |  |  |  | Daniel Santiago [50%] | 8h | 0.8h | 173.04 | 17.3 |

| ID | WBS | Task | Duration | Start | Finish | Predecessors | Complete | Remaining | Total slack | Free slack | Deadline | Resources | Work | Actual work | Cost | Actual cost |
| --- | --- | --- | --- | --- | --- | --- | --- | --- | --- | --- | --- | --- | --- | --- | --- | --- |
| 30 | 1.5.2 | **Front End Mockups** | 5d | 2013-09-23 A | 2013-09-27 A | 29, 24 | 100% |  |  |  | 2013-09-30 |  | 20h | 20h | 432.6 | 432.6 |
| 31 | 1.5.2.1 | Account Manager | 1d | 2013-09-23 A | 2013-09-23 A | 29 | 100% |  |  |  |  | Samuel Rodríguez [50%] | 4h | 4h | 86.52 | 86.52 |
| 32 | 1.5.2.2 | Repository Manager | 1d | 2013-09-24 A | 2013-09-24 A | 31 | 100% |  |  |  |  | Samuel Rodríguez [50%] | 4h | 4h | 86.52 | 86.52 |
| 33 | 1.5.2.3 | Testing Manager | 1d | 2013-09-25 A | 2013-09-25 A | 32 | 100% |  |  |  |  | Samuel Rodríguez [50%] | 4h | 4h | 86.52 | 86.52 |
| 34 | 1.5.2.4 | Source Code Viewer and Annotator | 1d | 2013-09-26 A | 2013-09-26 A | 33 | 100% |  |  |  |  | Samuel Rodríguez [50%] | 4h | 4h | 86.52 | 86.52 |
| 35 | 1.5.2.5 | Grading | 1d | 2013-09-27 A | 2013-09-27 A |  | 100% |  |  |  |  | Samuel Rodríguez [50%] | 4h | 4h | 86.52 | 86.52 |
| 36 | 1.5.3 | **Back End** | 5d | 2013-09-23 A | 2013-09-27 | 29, 24 | 67% | 1.67d | 0d |  | 2013-09-30 |  | 12h | 8h | 259.56 | 173.04 |
| 37 | 1.5.3.1 | Sandboxed Prototype | 1d | 2013-09-23 A | 2013-09-23 A | 29 | 100% |  |  |  |  | Daniel Santiago [50%] | 4h | 4h | 86.52 | 86.52 |
| 38 | 1.5.3.2 | REST API documentation | 1d | 2013-09-24 | 2013-09-24 | 37 |  |  | 3d |  |  | Daniel Santiago [50%] | 4h |  | 86.52 |  |
| 39 | 1.5.3.3 | Queries and Data Base Structure | 1d | 2013-09-27 A | 2013-09-27 A | 38 | 100% |  |  |  |  | Daniel Santiago [50%] | 4h | 4h | 86.52 | 86.52 |
| 40 | 1.5.4 | **Account and Repositories Manager** | 6d | 2013-09-19 A | 2013-09-26 A | 29, 24 | 100% |  |  |  | 2013-09-30 |  | 32h | 32h | 846.08 | 846.08 |
| 41 | 1.5.4.1 | DB Queries Documentation | 2d | 2013-09-23 A | 2013-09-24 A | 29 | 100% |  |  |  |  | Nelián Colón [50%] | 8h | 8h | 211.52 | 211.52 |
| 42 | 1.5.4.2 | Repositories Management | 3d | 2013-09-19 A | 2013-09-23 A | 41 | 100% |  |  |  |  | Nelián Colón [50%] | 12h | 12h | 317.28 | 317.28 |
| 43 | 1.5.4.3 | Payment System (Ads) | 3d | 2013-09-24 A | 2013-09-26 A | 42 | 100% |  |  |  |  | Nelián Colón [50%] | 12h | 12h | 317.28 | 317.28 |
| 44 | 1.6 | **Implementation** | 21d | 2013-09-27 A | 2013-10-25 |  | 7% | 19.59d | 1d |  | 2013-10-28 |  | 208h | 14h | 4,826.12 | 302.82 |
| 45 | 1.6.1 | **Front End** | 20d | 2013-09-30 A | 2013-10-25 | 30 | 10% | 18d | 0d |  |  |  | 80h | 8h | 1,730.4 | 173.04 |
| 46 | 1.6.1.1 | Account Manager | 4d | 2013-09-30 A | 2013-10-03 | 30 | 10% | 3.6d | 0.4d | 0d |  | Samuel Rodríguez [50%] | 16h | 1.6h | 346.08 | 34.61 |
| 47 | 1.6.1.2 | Repository Manager | 4d | 2013-10-04 A | 2013-10-09 | 46 | 10% | 3.6d | 0.4d | 0d |  | Samuel Rodríguez [50%] | 16h | 1.6h | 346.08 | 34.61 |
| 48 | 1.6.1.3 | Testing Manager | 4d | 2013-10-10 A | 2013-10-15 | 47 | 10% | 3.6d | 0.3d | 0d |  | Samuel Rodríguez [50%] | 16h | 1.6h | 346.08 | 34.61 |
| 49 | 1.6.1.4 | Source Code Viewer | 3d | 2013-10-16 A | 2013-10-18 | 48 | 10% | 2.7d | 0.3d | 0d |  | Samuel Rodríguez [50%] | 12h | 1.2h | 259.56 | 25.96 |
| 50 | 1.6.1.5 | Source Code Annotation | 3d | 2013-10-21 A | 2013-10-23 | 49 | 10% | 2.7d | 0.2d | 0d |  | Samuel Rodríguez [50%] | 12h | 1.2h | 259.56 | 25.96 |
| 51 | 1.6.1.6 | Grading | 2d | 2013-10-24 A | 2013-10-25 | 50 | 10% | 1.8d | 0d |  |  | Samuel Rodríguez [50%] | 8h | 0.8h | 173.04 | 17.3 |
| 52 | 1.6.2 | **Back End** | 15d | 2013-09-30 A | 2013-10-18 | 36 | 10% | 13.5d | 3d | 0d | 2013-10-25 |  | 60h | 6h | 1,297.8 | 129.78 |
| 53 | 1.6.2.1 | Data Base | 4d | 2013-09-30 A | 2013-10-03 | 36 | 10% | 3.6d | 0.4d | 0d |  | Daniel Santiago [50%] | 16h | 1.6h | 346.08 | 34.61 |
| 54 | 1.6.2.2 | Back End Server | 4d | 2013-10-04 A | 2013-10-09 | 53 | 10% | 3.6d | 0.4d | 0d |  | Daniel Santiago [50%] | 16h | 1.6h | 346.08 | 34.61 |
| 55 | 1.6.2.3 | Testing Framework | 4d | 2013-10-10 A | 2013-10-15 | 54 | 10% | 3.6d | 0.3d | 0d |  | Daniel Santiago [50%] | 16h | 1.6h | 346.08 | 34.61 |
| 56 | 1.6.2.4 | REST API | 3d | 2013-10-16 A | 2013-10-18 | 55 | 10% | 2.7d | 3d | 0d |  | Daniel Santiago [50%] | 12h | 1.2h | 259.56 | 25.96 |

| ID | WBS | Task | Type | Duration | Start | Finish | Predecessors | Total slack | Free slack | Constraint | Deadline | Resources | Work | Cost |
| --- | --- | --- | --- | --- | --- | --- | --- | --- | --- | --- | --- | --- | --- | --- |
| 57 | 1.6.3 | **Accounts and Repositories Manager** |  | 19d | 2013-09-27 | 2013-10-23 | 40 | 3d | 0d |  |  |  | 68h | 1,797.92 |
| 58 | 1.6.3.1 | Accounts and Repositories Controllers |  | 5d | 2013-09-27 | 2013-10-03 | 40 | 5d | 0d |  |  | Nelián Colón [50%] | 20h | 528.8 |
| 59 | 1.6.3.2 | Repository Manager |  | 5d | 2013-10-04 | 2013-10-10 | 58 | 5d | 0d |  |  | Nelián Colón [50%] | 20h | 528.8 |
| 60 | 1.6.3.3 | Communication with Back End Server |  | 2d | 2013-10-22 | 2013-10-23 | 53, 54, 55, 56 | 3d |  |  |  | Nelián Colón [50%] | 8h | 211.52 |
| 61 | 1.6.3.4 | Payment System (Ads) |  | 5d | 2013-10-11 | 2013-10-21 | 59 | 5d | 0d |  |  | Nelián Colón [50%] | 20h | 528.8 |
| 62 | 1.7 | **Unit Testing** |  | 7d | 2013-10-21 | 2013-10-28 |  | 5d |  |  |  |  | 28h | 663.36 |
| 63 | 1.7.1 | Front End Testing |  | 2d | 2013-10-26 | 2013-10-28 | 45 | 0d |  |  |  | Samuel Rodríguez [50%] | 8h | 173.04 |
| 64 | 1.7.2 | Back End Testing |  | 2d | 2013-10-21 | 2013-10-22 | 52 | 5d |  |  |  | Daniel Santiago [50%] | 8h | 173.04 |
| 65 | 1.7.3 | Account and Repositories Testing |  | 2d | 2013-10-26 | 2013-10-28 | 57 | 3d |  |  |  | Nelián Colón [50%] | 8h | 211.52 |
| 66 | 1.7.4 | Payment System Testing |  | 1d | 2013-10-25 | 2013-10-25 | 61 | 8d |  |  |  | Nelián Colón [50%] | 4h | 105.76 |
| 67 | 1.8 | **System Integration** |  | 12d | 2013-10-29 | 2013-11-13 |  | 0d |  |  | 2013-11-15 |  | 112h | 2,595.72 |
| 68 | 1.8.1 | Integration of Front End with Back End |  | 3d | 2013-10-29 | 2013-10-31 | 63, 64 | 0d |  |  |  | Daniel Santiago [50%]; Samuel Rodríguez [50%] | 24h | 519.12 |
| 69 | 1.8.2 | Integration of Back End with Account and Repositories Manager |  | 3d | 2013-11-01 | 2013-11-05 | 64, 65, 68 | 0d |  |  |  | Daniel Santiago [50%]; Nelián Colón [50%] | 24h | 576.84 |
| 70 | 1.8.3 | Integration of Ads System |  | 1d | 2013-11-06 | 2013-11-06 | 64, 66, 69 | 0d |  |  |  | Nelián Colón [50%] | 4h | 105.76 |
| 71 | 1.8.4 | Full Integration | milestone | 3d | 2013-11-07 | 2013-11-11 | 68, 69, 70 | 0d |  |  |  | Daniel Santiago [50%]; Nelián Colón [50%]; Samuel Rodríguez [50%] | 36h | 836.4 |
| 72 | 1.8.5 | Integration Testing |  | 2d | 2013-11-12 | 2013-11-13 | 71 | 0d |  |  |  | Daniel Santiago [50%]; Nelián Colón [50%]; Samuel Rodríguez [50%] | 24h | 557.6 |
| 73 | 1.9 | **Delivery** |  | 20d | 2013-11-14 | 2013-12-09 |  | 0d |  |  | 2013-12-09 |  | 96h | 2,230.4 |
| 74 | 1.9.1 | Final Deployment | milestone | 2d | 2013-11-14 | 2013-11-15 | 72 | 0d |  | finish no later than 2013-11-15 |  | Daniel Santiago [50%]; Nelián Colón [50%]; Samuel Rodríguez [50%] | 24h | 557.6 |
| 75 | 1.9.2 | System Demo | milestone | 1d | 2013-12-02 | 2013-12-02 | 74 | 2d |  | finish no earlier than 2013-12-02 |  | Daniel Santiago [50%]; Nelián Colón [50%]; Samuel Rodríguez [50%] | 12h | 278.8 |
| 76 | 1.9.3 | Final Report | milestone | 5d | 2013-12-05 | 2013-12-09 | 75 | 0d |  | finish no earlier than 2013-12-09 |  | Daniel Santiago [50%]; Nelián Colón [50%]; Samuel Rodríguez [50%] | 60h | 1,394 |
